Schedule from OmniPlan, 2026-08-26 to 2026-09-17.
Project start 2026-08-13

## Resources

| Resource | Group |
| --- | --- |
| ENSMA | staff |
| Sala de conferencias 1 | equipment |
| Equipo y Material | group |
| EICIT | staff |

## Schedule

| ID | WBS | Task | Type | Predecessors | Complete | Resources | Work | Actual work |
| --- | --- | --- | --- | --- | --- | --- | --- | --- |
| 1 | 1 | **PLAN OPERATIVO DETALLADO · Acompañamiento EICIT al PEI de la ENSMA** |  |  |  |  |  |  |
| 2 | 1.1 | **F0 · Alistamiento y gobernanza** |  |  |  |  |  |  |
| 3 | 1.1.1 | Suscripción del acta de inicio y designación de interlocutores (coordinador académico y coordinador administrativo por cada parte) |  |  | 100% | EICIT; ENSMA | 8h | 8h |
| 4 | 1.1.2 | Conformación o activación del equipo gestor del PEI (paso 1 de la Circular) |  | 3 | 100% | ENSMA | 16h | 16h |
| 5 | 1.1.3 | Elaboración del cronograma conjunto |  | 3 | 100% | EICIT; ENSMA | 16h | 16h |
| 6 | 1.1.4 | Radicación de la solicitud formal de insumos (matriz con responsables y fechas) |  | 3FS+1d | 100% | EICIT | 16h | 16h |
| 7 | 1.1.5 | Definición del protocolo de entregas (control de cambios y versión limpia) y del repositorio en Drive |  | 6SS+1d | 100% | EICIT; ENSMA | 32h | 32h |
| 8 | 1.1.6 | Apertura de la línea paralela de cambio a media técnica: definición de alcance y responsable del trámite de licencia |  | 6 | 100% | ENSMA | 8h | 8h |
| 9 | 1.2 | **F1 · Diagnóstico** |  |  |  |  |  |  |
| 10 | 1.2.1 | Recolección y verificación de los insumos entregados por ENSMA |  | 6SS | 100% | EICIT | 40h | 40h |
| 11 | 1.2.2 | Análisis de brechas del PEI vigente frente a la plantilla oficial (cinco capítulos) |  | 10SS+3d | 100% | EICIT | 32h | 32h |
| 12 | 1.2.3 | Verificación del estado real de las mallas |  | 10SS+3d | 100% | EICIT | 24h | 24h |
| 13 | 1.2.4 | Revisión de la autoevaluación (Guía 34), el PMI y el POA para anclar metas |  | 10SS+4d | 100% | EICIT | 24h | 24h |
| 14 | 1.2.5 | Aplicación del instrumento de diagnóstico de competencias digitales docentes: diseño, aplicación, análisis |  | 4SS+4d | 100% | EICIT | 40h | 40h |
| 15 | 1.2.6 | Revisión de los documentos del convenio SENA (denominación 'desarrollo de software') |  | 10SS+4d | 100% | EICIT | 16h | 16h |
| 16 | 1.2.7 | Consolidación del informe de diagnóstico y decisión sobre el carácter de la Media |  | 11SS+3d | 100% | EICIT; ENSMA | 16h | 16h |
| 17 | 1.2.8 | HITO: Informe de diagnóstico y acta de decisión de la Media | milestone | 16 |  |  |  |  |
| 18 | 1.3 | **F2 · Estudio de referentes** |  |  |  |  |  |  |
| 19 | 1.3.1 | Compilación de los referentes normativos 2024–2026 de la Circular |  | 6SS+3d | 100% | EICIT | 32h | 32h |
| 20 | 1.3.2 | Clasificación de los referentes en obligatorios y recomendados (tabla-semáforo) |  | 19SS+2d | 100% | EICIT | 40h | 40h |
| 21 | 1.3.3 | Conformación de los grupos de estudio por componente |  | 4SS+6d | 100% | ENSMA | 24h | 24h |
| 22 | 1.3.4 | Elaboración de fichas de implicaciones para el PEI (por referente obligatorio) |  | 20SS+3d | 100% |  | 40h | 40h |
| 23 | 1.3.5 | Priorización de los referentes tecnológicos (Directiva MEN 01/2026, Leyes 2489/2025 y 2564/2026, socioemocional) |  | 20SS+4d | 100% |  | 24h | 24h |
| 24 | 1.3.6 | Matriz de incorporación tecnológica | milestone | 23 |  |  |  |  |

| ID | WBS | Task | Type | Start | Predecessors | Complete | Constraint | Resources | Work | Actual work |
| --- | --- | --- | --- | --- | --- | --- | --- | --- | --- | --- |
| 25 | 1.4 | **F3 · Modelo pedagógico** |  |  |  |  |  |  |  |  |
| 26 | 1.4.1 | Revisión del modelo pedagógico vigente (Sistema Preventivo, escuela activa, competencias) |  |  | 11SS+5d | 100% |  | ENSMA | 32h | 32h |
| 27 | 1.4.2 | Diseño de los capítulos de innovación y tecnología del modelo |  |  | 26SS+3d | 100% |  |  | 40h | 40h |
| 28 | 1.4.3 | Articulación de la tecnología con razón, religión y amabilidad (criterios del carisma) |  |  | 27SS+2d | 100% |  |  | 32h | 32h |
| 29 | 1.4.4 | Integración y redacción del modelo pedagógico renovado |  |  | 27SS+3d | 100% |  | ENSMA | 24h | 24h |
| 30 | 1.4.5 | Validación institucional del modelo (equipo gestor / Consejo Académico) |  |  | 29SS+2d | 80% |  | ENSMA | 16h | 12.8h |
| 31 | 1.4.6 | Modelo pedagógico validado | milestone |  | 30 |  |  |  |  |  |
| 32 | 1.5 | **F4 · Currículo y mallas** |  |  |  |  |  |  |  |  |
| 33 | 1.5.1 | Definición de la arquitectura del plan de estudios (áreas obligatorias del art. 23 Ley 115, optativas, énfasis; intensidades horarias; reglas 80/20) |  |  | 30SS | 60% |  | ENSMA | 40h | 24h |
| 34 | 1.5.2 | Actualización de la plantilla o formato de planes de estudio a la última versión del MEN (Reunión SEM) |  | 2026-08-26 |  | 100% | start locked to 2026-08-26 |  | 32h | 32h |
| 35 | 1.5.3 | Recolección y organización de los insumos curriculares (lineamientos, EBC, DBA, mallas de aprendizaje, modelo validado, referentes obligatorios) |  | 2026-09-09 | 31SS | 100% | start locked to 2026-09-09 |  | 40h | 40h |
| 36 | 1.5.4 | Definición de la línea transversal de Tecnología e Innovación (Transición a 9.°): pensamiento computacional, competencias digitales, ciudadanía digital, robótica/STEAM, introducción a la IA |  |  | 33SS+3d | 60% |  |  | 56h | 33.6h |
| 37 | 1.5.5 | Diseño de la Media Técnica: ampliación del horizonte del SENA de 'desarrollo de software' a una propuesta más amplia |  |  | 33SS+3d | 50% |  |  | 56h | 28h |
| 38 | 1.5.6 | Generación de la propuesta de mallas por área y grado (con apoyo de EICIT) |  |  | 36SS+2d |  |  |  | 56h |  |
| 39 | 1.5.7 | Validación técnica y normativa (cumplimiento del 80/20, áreas obligatorias, referentes obligatorios incorporados) |  |  | 38SS+5d |  |  |  | 24h |  |
| 40 | 1.5.8 | Validación por los jefes de área |  |  | 39SS+2d |  |  | ENSMA | 24h |  |
| 41 | 1.5.9 | Consolidación de observaciones y versión final |  |  | 40 |  |  |  | 16h |  |
| 42 | 1.5.10 | MALLAS CURRICULARES FINALES | milestone |  | 41 |  |  |  |  |  |
| 43 | 1.6 | **F5 · Ajuste del PEI** |  |  |  |  |  |  |  |  |
| 44 | 1.6.1 | Reorganización del PEI en los cinco capítulos de la plantilla |  | 2026-09-17 | 11 | 20% | start locked to 2026-09-17 | ENSMA | 40h | 8h |
| 45 | 1.6.2 | Incorporación de los referentes obligatorios en cada componente |  |  | 44SS+3d | 10% |  |  | 40h | 4h |
| 46 | 1.6.3 | Integración del modelo validado y las mallas finales al PEI |  |  | 44SS+7d |  |  | ENSMA | 24h |  |
| 47 | 1.6.4 | Ubicación de EICIT en 'Servicios adicionales o complementarios' (comodato/cooperación, no cobro) |  |  | 42 |  |  |  | 24h |  |
| 48 | 1.6.5 | Relocalización de anexos a Drive (modo lector) y auditoría de numeración, tablas y contenido |  |  | 47 |  |  |  | 8h |  |
| 49 | 1.6.6 | Ajuste de forma (hoja oficio, fuente 11, interlineado 1.5, PDF editable) y versiones con control de cambios y limpia |  |  | 48 |  |  |  | 8h |  |
| 50 | 1.6.7 | PEI AJUSTADO | milestone |  | 49 |  |  |  |  |  |

| ID | WBS | Task | Type | Predecessors | Complete | Work | Actual work |
| --- | --- | --- | --- | --- | --- | --- | --- |
| 51 | 1.7 | **F6 · Diplomado en Inteligencia Artificial** |  |  |  |  |  |
| 52 | 1.7.1 | Definición de objetivos, perfil de ingreso y egreso, y competencias del Diplomado |  | 14 |  | 40h |  |
| 53 | 1.7.2 | Diseño de los módulos, contenidos e intensidad horaria |  | 52 |  | 64h |  |
| 54 | 1.7.3 | Definición de la metodología (formación situada) y articulación con el Laboratorio de Innovación |  | 53SS+5d |  | 56h |  |
| 55 | 1.7.4 | Definición de la evaluación, la certificación y las evidencias |  | 53 |  | 40h |  |
| 56 | 1.7.5 | Consolidación del programa del Diplomado |  | 55SS+4d |  | 24h |  |
| 57 | 1.7.6 | Programa del diplomado en IA | milestone | 56 |  |  |  |
| 58 | 1.8 | **F7 · Deliberación y adopción** |  |  |  |  |  |
| 59 | 1.8.1 | Preparación de la documentación para el Consejo Académico |  | 49SS |  | 8h |  |
| 60 | 1.8.2 | Sesión del Consejo Académico (recomendaciones y aportes) |  | 50 |  | 8h |  |
| 61 | 1.8.3 | Presentación y aprobación en el Consejo Directivo |  | 60SS+2d |  | 16h |  |
| 62 | 1.8.4 | Elaboración de la resolución rectoral de adopción (con SIEE y Manual de Convivencia) |  | 61 |  | 8h |  |
| 63 | 1.8.5 | Verificación de la trazabilidad participativa (actas y evidencias) |  | 62 |  | 8h |  |
| 64 | 1.8.6 | Resolución rectoral | milestone | 63 |  |  |  |
| 65 | 1.9 | **F8 · Cierre y sostenibilidad** |  |  |  |  |  |
| 66 | 1.9.1 | Publicación y socialización del PEI adoptado (web, plataformas, comunidad educativa) |  | 62 |  | 24h |  |
| 67 | 1.9.2 | Transferencia de capacidades al equipo gestor y a los jefes de área |  | 62 |  | 32h |  |
| 68 | 1.9.3 | Definición de la ruta de actualización anual del PEI y del plan de acompañamiento 2027 |  | 67SS+1d |  | 24h |  |
| 69 | 1.9.4 | Evaluación de impacto inicial, lecciones aprendidas e informe de cierre |  | 67SS+2d |  | 24h |  |
| 70 | 1.9.5 | Informe de Cierre | milestone | 69 |  |  |  |
| 71 | 1.10 | **LP · Línea paralela · Cambio a Media Técnica (licencia)** |  |  |  |  |  |
| 72 | 1.10.1 | Recopilación de los documentos del convenio SENA y del estado de la propuesta |  |  | 100% | 8h | 8h |
| 73 | 1.10.2 | Análisis de factibilidad de la media técnica (arts. 31 y 32 Ley 115; art. 2.3.3.1.6.6 Decreto 1075) |  |  |  | 8h |  |
| 74 | 1.10.3 | Preparación y radicación del trámite de modificación de la licencia de funcionamiento ante la Secretaría |  |  |  | 8h |  |
